Schedule from MS Project, 2026-10-05 to 2027-01-06, costs in Br.

## Calendars

- Стандартный: Mon-Fri 09:00-13:00, 14:00-18:00; Sat-Sun off. Exceptions (off unless hours are given): 2026-12-24 09:00-13:00, 14:00-17:00 (ППРождесво, recurring), 2026-12-25 (Рожедство), 2026-12-31 09:00-13:00, 14:00-17:00 (ППНГ, recurring), 2027-01-01 (Новый год), 2027-01-06 09:00-13:00, 14:00-17:00 (ППРождество_2, recurring).

## Resources

| Resource | Rate |
| --- | --- |
| Руководитель проекта | 15 |
| Веб-архитектор | 15 |
| Фронтенд-разработчик | 14 |
| Бэкенд-разработчик | 14 |
| Дизайнер | 12 |
| Бизнес-аналитик | 10 |
| Тест-инженер | 13 |
| Контент-менеджер | 8 |
| Картридж для принтера | 50 |
| Бумага | 14 |
| Покупка лицензии на ПО | 120 |
| Услуги связи |  |
| Интернет |  |

## Schedule

| ID | WBS | Task | Type | Duration | Start | Finish | Predecessors | Total slack | Free slack | Constraint | Resources | Work | Cost |
| --- | --- | --- | --- | --- | --- | --- | --- | --- | --- | --- | --- | --- | --- |
| 1 | 1 | Начало проекта | milestone, manual | 0d | 2026-10-05 | 2026-10-05 |  |  |  |  |  |  |  |
| 2 | 2 | **Анализ требований** |  | 23d | 2026-10-05 | 2026-11-04 |  | -7d | 0d |  |  | 208h | 2,656 |
| 3 | 2.1 | Встреча с заказчиком | manual | 1d | 2026-10-05 | 2026-10-05 | 1 |  |  |  | Бизнес-аналитик; Дизайнер; Руководитель проекта; Веб-архитектор | 32h | 416 |
| 4 | 2.2 | Сбор информации |  | 12d | 2026-10-12 | 2026-11-04 | 3 | 42d |  |  | Бизнес-аналитик; Интернет [0.1%] | 48h | 500 |
| 5 | 2.3 | Написание документа требований | manual | 2d | 2026-10-06 | 2026-10-07 | 3 |  |  |  | Руководитель проекта; Бизнес-аналитик | 32h | 400 |
| 6 | 2.4 | Обсуждение требований с заказчиком | manual | 1d | 2026-10-08 | 2026-10-08 | 5 |  |  |  | Бизнес-аналитик; Руководитель проекта; Веб-архитектор; Дизайнер; Услуги связи [0.1%] | 32h | 436 |
| 7 | 2.5 | Корректировка требований | manual | 2d | 2026-10-09 | 2026-10-13 | 6 |  |  |  | Руководитель проекта; Бизнес-аналитик | 16h | 200 |
| 8 | 2.6 | Подготовка договора и устава | manual | 2d | 2026-10-09 | 2026-10-12 | 6 |  |  |  | Руководитель проекта; Картридж для принтера; Бумага | 16h | 304 |
| 9 | 2.7 | Согласование документов с заказчиком |  | 4d | 2026-10-14 | 2026-11-03 | 7, 8 | -14d | 0d |  | Руководитель проекта; Бизнес-аналитик | 32h | 400 |
| 10 | 2.8 | Анализ требований | milestone, manual | 0d | 2026-10-15 | 2026-10-15 | 9 |  |  |  |  |  |  |
| 11 | 3 | **Разработка ТЗ** |  | 20d | 2026-10-12 | 2026-11-06 |  | 0d |  |  |  | 176h | 2,454 |
| 12 | 3.1 | Определение структуры веб-приложения | manual | 7d | 2026-10-21 | 2026-11-02 | 10 |  |  |  | Веб-архитектор | 56h | 840 |
| 13 | 3.2 | Выбор технологий |  | 2d | 2026-10-22 | 2026-10-23 | 10 | 0d |  | as late as possible | Веб-архитектор [50%] | 8h | 120 |
| 14 | 3.3 | Разработка ТЗ | manual | 8d | 2026-10-26 | 2026-11-06 | 12, 13 |  |  |  | Руководитель проекта; Бизнес-аналитик; Веб-архитектор; Бумага | 96h | 1,294 |
| 15 | 3.4 | Согласование ТЗ с заказчиком | manual | 4d | 2026-10-12 | 2026-10-15 | 14 |  |  |  | Бизнес-аналитик [50%]; Руководитель проекта [50%] | 16h | 200 |
| 16 | 3.5 | Завершение разработки ТЗ | milestone, manual | 0d | 2026-10-13 | 2026-10-13 | 15 |  |  |  |  |  |  |
| 17 | 4 | **Создание прототипа** |  | 6d | 2026-10-13 | 2026-10-21 |  | 0d |  |  |  | 44.8h | 672 |
| 18 | 4.1 | Создание прототипа | manual | 4d | 2026-10-13 | 2026-10-16 | 16 |  |  |  | Веб-архитектор | 32h | 480 |
| 19 | 4.2 | Согласование с заказчиком | manual | 2d | 2026-10-19 | 2026-10-20 | 18 |  |  |  | Веб-архитектор [40%]; Руководитель проекта [40%] | 12.8h | 192 |
| 20 | 4.3 | Завершение создания прототипа | milestone, manual | 0d | 2026-10-21 | 2026-10-21 | 19 |  |  |  |  |  |  |
| 21 | 5 | **Разработка дизайна веб-приложения** |  | 18d | 2026-10-21 | 2026-11-13 |  | 0d |  |  |  | 172.8h | 2,176.8 |
| 22 | 5.1 | Разработка макетов страниц | manual | 12d | 2026-10-21 | 2026-11-09 | 20 |  |  |  | Дизайнер | 96h | 1,152 |
| 23 | 5.2 | Согласование макетов с заказчиком | manual | 8d | 2026-10-21 | 2026-11-13 | 22 |  |  |  | Руководитель проекта; Дизайнер | 64h | 864 |
| 24 | 5.3 | Доработка макетов | manual | 1d | 2026-10-27 | 2026-10-27 | 23 |  |  |  | Дизайнер | 8h | 96 |
| 25 | 5.4 | Утверждение окончательного варианта | manual | 1d | 2026-11-02 | 2026-11-02 | 24FS+3d |  |  |  | Руководитель проекта [30%]; Дизайнер [30%] | 4.8h | 64.8 |
| 26 | 5.5 | Завершение разработки дизайна | milestone, manual | 0d | 2026-10-29 | 2026-10-29 | 25 |  |  |  |  |  |  |

| ID | WBS | Task | Type | Duration | Start | Finish | Predecessors | Total slack | Resources | Work | Cost |
| --- | --- | --- | --- | --- | --- | --- | --- | --- | --- | --- | --- |
| 27 | 6 | **Верстка и программирование** |  | 29d | 2026-10-29 | 2026-12-09 |  |  |  | 371.2h | 5,138.8 |
| 28 | 6.1 | Разработка клиентской части приложения | manual | 16d | 2026-10-29 | 2026-11-19 | 26 |  | Фронтенд-разработчик | 128h | 1,792 |
| 29 | 6.2 | Разработка серверной части приложения | manual | 15d | 2026-10-29 | 2026-11-18 | 26 |  | Бэкенд-разработчик; Покупка лицензии на ПО | 120h | 1,800 |
| 30 | 6.3 | Подготовка контента и заполнение страниц | manual | 4d | 2026-11-20 | 2026-11-25 | 28 |  | Контент-менеджер | 32h | 256 |
| 31 | 6.4 | Тестирование | manual | 2d | 2026-11-26 | 2026-11-27 | 29, 30 |  | Тест-инженер | 16h | 208 |
| 32 | 6.5 | Правка кода, устранение сбоев в работе | manual | 4d | 2026-11-30 | 2026-12-03 | 31 |  | Фронтенд-разработчик [80%]; Бэкенд-разработчик [80%] | 51.2h | 716.8 |
| 33 | 6.6 | Интеграция с внешними системами и сервисами | manual | 3d | 2026-12-04 | 2026-12-08 | 32 |  | Бэкенд-разработчик; Интернет [0.1%] | 24h | 366 |
| 34 | 6.7 | Завершение верстки и программирования | milestone, manual | 0d | 2026-12-09 | 2026-12-09 | 33 |  |  |  |  |
| 35 | 7 | **Тестирование и отладка веб-приложения** |  | 13d | 2026-12-09 | 2026-12-29 |  | 0d |  | 134.4h | 1,872 |
| 36 | 7.1 | Техническое тестирование | manual | 2d | 2026-12-09 | 2026-12-10 | 34 |  | Тест-инженер | 16h | 208 |
| 37 | 7.2 | Тестирование на стороне заказчика | manual | 4d | 2026-12-11 | 2026-12-16 | 36 |  | Руководитель проекта [20%] | 6.4h | 96 |
| 38 | 7.3 | Отладка | manual | 7d | 2026-12-17 | 2026-12-29 | 37 |  | Фронтенд-разработчик; Бэкенд-разработчик | 112h | 1,568 |
| 39 | 7.4 | Завершение тестирования и отладки | milestone, manual | 0d | 2026-12-29 | 2026-12-29 | 38 |  |  |  |  |
| 40 | 8 | **Внедрение** |  | 63d | 2026-10-07 | 2027-01-06 |  | 0d |  | 80h | 1,038 |
| 41 | 8.1 | Перенос на рабочий сервер | manual | 2d | 2026-12-29 | 2026-12-31 | 39 |  | Бэкенд-разработчик | 16h | 224 |
| 42 | 8.2 | Формирование отчетности | manual | 3d | 2026-12-29 | 2027-01-04 | 39 |  | Руководитель проекта; Бизнес-аналитик; Бумага | 48h | 614 |
| 43 | 8.3 | Передача веб-приложения заказчику | manual | 2d | 2027-01-04 | 2027-01-06 | 41, 42 |  | Руководитель проекта [50%]; Бизнес-аналитик [50%] | 16h | 200 |
| 44 | 8.4 | Завершение внедрения | milestone, manual | 0d | 2026-10-07 | 2026-10-07 | 43 |  |  |  |  |
| 45 | 8.5 | Завершение проекта | milestone, manual | 0d | 2026-10-07 | 2026-10-07 | 44 |  |  |  |  |
