# Awdos

Schedule from MS Project, 2026-09-18 to 2027-02-16, status date 2027-02-16, costs in Br, A marks actual dates.

## Calendars

- Стандартный: Mon-Fri 09:00-13:00, 14:00-18:00; Sat-Sun off. Exceptions (off unless hours are given): 2026-11-06 to 2027-04-27 09:00-13:00, 14:00-17:00 (ПР. 7 ноября, recurring), 2026-11-07 (7 ноября), 2026-12-24 09:00-13:00, 14:00-17:00 (ПР. 25 декабря, recurring), 2026-12-24 (ПР. 7 января), 2026-12-25 (25 декабря), 2026-12-31 to 2033-12-31 09:00-13:00, 14:00-17:00 (ПР. 31 декабря, recurring), 2027-01-01 (1 января), 2027-01-02 (2 января), 2027-01-07 (7 января).

## Resources

| Resource | Rate |
| --- | --- |
| Руководитель проекта | 15 |
| Веб-архитектор | 15 |
| Фронтенд-разработчик | 14 |
| Бэкенд- разработчик | 14 |
| Дизайнер | 12 |
| Бизнес-аналитик | 10 |
| Тест-инженер | 13 |
| Контент-менеджер | 8 |
| Картридж для принтера | 50 |
| Бумага | 14 |
| Покупка лицензии на ПО | 120 |
| Услуги связи |  |
| Интернет |  |

## Schedule

| ID | WBS | Task | Type | Duration | Start | Finish | Predecessors | Complete | Remaining | Baseline start | Baseline finish | Baseline duration | Total slack | Free slack | Constraint | Resources | Work | Actual work | Cost | Baseline cost | Actual cost | Text1 |
| --- | --- | --- | --- | --- | --- | --- | --- | --- | --- | --- | --- | --- | --- | --- | --- | --- | --- | --- | --- | --- | --- | --- |
| 1 | 1 | Начало проекта | milestone | 0d | 2026-09-18 | 2026-09-18 |  |  |  | 2026-09-18 | 2026-09-18 | 0d | 70.8d | 0d |  |  |  |  |  |  |  |  |
| 2 | 2 | **Анализ требований** |  | 18.88d | 2026-09-18 | 2026-10-14 |  |  |  | 2026-09-18 | 2026-10-22 | 24.88d | 70.8d |  |  |  | 304h |  | 3,954 | 3,954 |  |  |
| 3 | 2.1 | Встреча с заказчиком |  | 1d | 2026-09-18 | 2026-09-18 | 1 |  |  | 2026-09-18 | 2026-09-18 | 1d | 70.8d | 0d |  | Бизнес-аналитик; Дизайнер; Руководитель проекта; Веб-архитектор | 32h |  | 416 | 416 |  |  |
| 4 | 2.2 | Сбор информации |  | 12.88d | 2026-09-21 | 2026-10-14 | 3 |  |  | 2026-09-21 | 2026-10-22 | 12.88d | 83.92d |  |  | Бизнес-аналитик; Руководитель проекта; Дизайнер; Интернет [0.1%] | 144h |  | 1,796 | 1,796 |  |  |
| 5 | 2.3 | Написание документа требований |  | 2d | 2026-09-21 | 2026-09-22 | 3 |  |  | 2026-09-21 | 2026-09-22 | 2d | 70.8d | 0d |  | Руководитель проекта; Бизнес-аналитик | 32h |  | 402 | 402 |  |  |
| 6 | 2.4 | Обсуждение требований с заказчиком |  | 1d | 2026-09-23 | 2026-09-23 | 5 |  |  | 2026-09-23 | 2026-09-23 | 1d | 70.8d | 0d |  | Бизнес-аналитик; Руководитель проекта; Веб-архитектор; Дизайнер; Услуги связи [0.1%] | 32h |  | 436 | 436 |  |  |
| 7 | 2.5 | Корректировка требований |  | 2d | 2026-09-24 | 2026-09-29 | 6 |  |  | 2026-09-24 | 2026-09-29 | 2d | 70.8d | 1d |  | Руководитель проекта; Бизнес-аналитик | 16h |  | 200 | 200 |  |  |
| 8 | 2.6 | Подготовка договора и устава |  | 2d | 2026-09-24 | 2026-09-25 | 6 |  |  | 2026-09-24 | 2026-09-25 | 2d | 72.8d | 2d |  | Руководитель проекта; Картридж для принтера; Бумага | 16h |  | 304 | 304 |  |  |
| 9 | 2.7 | Согласование документов с заказчиком |  | 2d | 2026-09-30 | 2026-10-01 | 7, 8 |  |  | 2026-09-30 | 2026-10-01 | 2d | 70.8d | 0d |  | Руководитель проекта; Бизнес-аналитик | 32h |  | 400 | 400 |  |  |
| 10 | 2.8 | Анализ требований | milestone | 0d | 2026-10-01 | 2026-10-01 | 9 |  |  | 2026-10-01 | 2026-10-01 | 0d | 70.8d | 0d |  |  |  |  |  |  |  |  |
| 11 | 3 | **Разработка ТЗ** |  | 83.8d | 2026-10-02 | 2027-02-03 |  |  |  | 2026-10-02 | 2026-10-20 | 13d | 0d |  |  |  | 176h |  | 2,432 | 2,432 |  |  |
| 12 | 3.1 | Определение структуры веб-приложения |  | 7d | 2026-10-02 | 2026-10-12 | 10 |  |  | 2026-10-02 | 2026-10-12 | 7d | 70.8d |  |  | Веб-архитектор | 56h |  | 840 | 840 |  |  |
| 13 | 3.2 | Выбор технологий | milestone | 2d | 2027-01-22 | 2027-01-26 | 10 |  |  | 2026-10-09 | 2026-10-12 | 2d | 0d |  | as late as possible | Веб-архитектор [50%] | 8h |  | 120 | 120 |  |  |
| 14 | 3.3 | Разработка ТЗ |  | 4d | 2027-01-26 | 2027-02-01 | 12, 13 |  |  | 2026-10-13 | 2026-10-16 | 4d | 0d |  |  | Руководитель проекта; Бизнес-аналитик; Бэкенд- разработчик; Бумага | 96h |  | 1,272 | 1,272 |  |  |
| 15 | 3.4 | Согласование ТЗ с заказчиком |  | 2d | 2027-02-01 | 2027-02-03 | 14 |  |  | 2026-10-19 | 2026-10-20 | 2d | 0d |  |  | Бизнес-аналитик [50%]; Руководитель проекта [50%] | 16h |  | 200 | 200 |  |  |
| 16 | 3.5 | Завершение разработки ТЗ | milestone | 0d | 2027-02-03 | 2027-02-03 | 15 |  |  | 2026-10-20 | 2026-10-20 | 0d | 0d |  |  |  |  |  |  |  |  |  |
| 17 | 4 | **Создание прототипа** |  | 9d | 2027-02-03 | 2027-02-16 |  |  |  | 2026-10-21 | 2026-10-28 | 6d | 0d |  |  |  | 44.8h |  | 672 | 672 |  |  |
| 18 | 4.1 | Создание прототипа |  | 4d | 2027-02-03 | 2027-02-09 | 16 |  |  | 2026-10-21 | 2026-10-26 | 4d | 0d |  |  | Веб-архитектор | 32h |  | 480 | 480 |  |  |
| 19 | 4.2 | Согласование с заказчиком |  | 3d | 2027-02-09 | 2027-02-16 | 18 |  |  | 2026-10-27 | 2026-10-28 | 2d | 0d |  |  | Веб-архитектор [40%]; Руководитель проекта [40%] | 12.8h |  | 192 | 192 |  |  |
| 20 | 4.3 | Завершение создания прототипа | milestone | 0d | 2027-02-16 | 2027-02-16 | 19 |  |  | 2026-10-28 | 2026-10-28 | 0d | 0d |  |  |  |  |  |  |  |  |  |
| 21 | 5 | **Разработка дизайна веб-приложения** |  | 22.8d | 2026-10-29 A | 2026-11-30 |  | 99% | 0d | 2026-10-29 | 2026-11-27 | 21d | 0d |  |  |  | 190.08h | 190.08h | 2,394.48 | 2,176.8 | 2,394.48 |  |
| 22 | 5.1 | Разработка макетов страниц |  | 13.2d | 2026-10-29 A | 2026-11-17 A | 20 | 100% |  | 2026-10-29 | 2026-11-16 | 12d |  |  |  | Дизайнер | 105.6h | 105.6h | 1,267.2 | 1,152 | 1,267.2 | 5760 |
| 23 | 5.2 | Согласование макетов с заказчиком |  | 4.4d | 2026-11-17 A | 2026-11-23 A | 22 | 100% |  | 2026-11-16 | 2026-11-20 | 4d |  |  |  | Руководитель проекта; Дизайнер | 70.4h | 70.4h | 950.4 | 864 | 950.4 |  |
| 24 | 5.3 | Доработка макетов |  | 1.1d | 2026-11-26 A | 2026-11-27 A | 23FS+3d | 100% |  | 2026-11-25 | 2026-11-26 | 1d |  |  |  | Дизайнер | 8.8h | 8.8h | 105.6 | 96 | 105.6 |  |
| 25 | 5.4 | Утверждение окончательного варианта |  | 1.1d | 2026-11-27 A | 2026-11-30 A | 24 | 100% |  | 2026-11-26 | 2026-11-27 | 1d |  |  |  | Руководитель проекта [30%]; Дизайнер [30%] | 5.28h | 5.28h | 71.28 | 64.8 | 71.28 |  |
| 26 | 5.5 | Завершение разработки дизайна | milestone | 0d | 2026-11-30 | 2026-11-30 | 25 |  |  | 2026-11-27 | 2026-11-27 | 0d | 0d |  |  |  |  |  |  |  |  |  |

| ID | WBS | Task | Type | Duration | Start | Finish | Predecessors | Baseline start | Baseline finish | Baseline duration | Total slack | Resources | Work | Cost | Baseline cost |
| --- | --- | --- | --- | --- | --- | --- | --- | --- | --- | --- | --- | --- | --- | --- | --- |
| 27 | 6 | **Верстка и программирование** |  | 29d | 2026-11-30 | 2027-01-15 |  | 2026-11-27 | 2027-01-13 | 29d | 0d |  | 371.2h | 5,138.8 | 5,138.8 |
| 28 | 6.1 | Разработка клиентской части приложения |  | 16d | 2026-11-30 | 2026-12-22 | 26 | 2026-11-27 | 2026-12-21 | 16d | 0d | Фронтенд-разработчик | 128h | 1,792 | 1,792 |
| 29 | 6.2 | Разработка серверной части приложения |  | 15d | 2026-11-30 | 2026-12-21 | 26 | 2026-11-27 | 2026-12-18 | 15d | 5d | Бэкенд- разработчик; Покупка лицензии на ПО | 120h | 1,800 | 1,800 |
| 30 | 6.3 | Подготовка контента и заполнение |  | 4d | 2026-12-22 | 2026-12-30 | 28 | 2026-12-21 | 2026-12-29 | 4d | 0d | Контент-менеджер | 32h | 256 | 256 |
| 31 | 6.4 | Тестирование |  | 2d | 2026-12-30 | 2027-01-05 | 29, 30 | 2026-12-29 | 2026-12-31 | 2d | 0d | Тест-инженер | 16h | 208 | 208 |
| 32 | 6.5 | Правка кода, устранение сбоев в работе |  | 4d | 2027-01-05 | 2027-01-12 | 31 | 2026-12-31 | 2027-01-08 | 4d | 0d | Фронтенд-разработчик [80%]; Бэкенд- разработчик [80%] | 51.2h | 716.8 | 716.8 |
| 33 | 6.6 | Интеграция с внешними системами и |  | 3d | 2027-01-12 | 2027-01-15 | 32 | 2027-01-08 | 2027-01-13 | 3d | 0d | Бэкенд- разработчик; Интернет [0.1%] | 24h | 366 | 366 |
| 34 | 6.7 | Завершение верстки и программирования | milestone | 0d | 2027-01-15 | 2027-01-15 | 33 | 2027-01-13 | 2027-01-13 | 0d | 0d |  |  |  |  |
| 35 | 7 | **Тестирование и отладка веб-приложения** |  | 17d | 2027-01-15 | 2027-02-09 |  | 2027-01-13 | 2027-02-01 | 13d | 0d |  | 134.4h | 1,872 | 1,872 |
| 36 | 7.1 | Техническое тестирование |  | 2d | 2027-01-15 | 2027-01-19 | 34 | 2027-01-13 | 2027-01-15 | 2d | 0d | Тест-инженер | 16h | 208 | 208 |
| 37 | 7.2 | Тестирование на стороне заказчика |  | 4d | 2027-01-19 | 2027-01-25 | 36 | 2027-01-15 | 2027-01-21 | 4d | 0d | Руководитель проекта [20%] | 6.4h | 96 | 96 |
| 38 | 7.3 | Отладка |  | 11d | 2027-01-25 | 2027-02-09 | 37 | 2027-01-21 | 2027-02-01 | 7d | 0d | Фронтенд-разработчик; Бэкенд- разработчик | 112h | 1,568 | 1,568 |
| 39 | 7.4 | Завершение тестирования и отладки | milestone | 0d | 2027-02-09 | 2027-02-09 | 38 | 2027-02-01 | 2027-02-01 | 0d | 0d |  |  |  |  |
| 40 | 8 | **Внедрение** |  | 5d | 2027-02-09 | 2027-02-16 |  | 2027-02-01 | 2027-02-08 | 5d | 0d |  | 80h | 1,038 | 1,038 |
| 41 | 8.1 | Перенос на рабочий сервер |  | 2d | 2027-02-09 | 2027-02-11 | 39 | 2027-02-01 | 2027-02-03 | 2d | 1d | Бэкенд- разработчик | 16h | 224 | 224 |
| 42 | 8.2 | Формирование отчетности |  | 3d | 2027-02-09 | 2027-02-12 | 39 | 2027-02-01 | 2027-02-04 | 3d | 0d | Руководитель проекта; Бизнес-аналитик; Бумага | 48h | 614 | 614 |
| 43 | 8.3 | Передача веб-приложения заказчику |  | 2d | 2027-02-12 | 2027-02-16 | 41, 42 | 2027-02-04 | 2027-02-08 | 2d | 0d | Руководитель проекта [50%]; Бизнес-аналитик [50%] | 16h | 200 | 200 |
| 44 | 8.4 | Завершение внедрения | milestone | 0d | 2027-02-16 | 2027-02-16 | 43 | 2027-02-08 | 2027-02-08 | 0d | 0d |  |  |  |  |
| 45 | 8.5 | Завершение проекта | milestone | 0d | 2027-02-16 | 2027-02-16 | 44 | 2027-02-08 | 2027-02-08 | 0d | 0d |  |  |  |  |
